# 兰州市融媒体中心建设项目（第一包）

How a schedule from a web Gantt chart changed from version to version. A marks actual dates.

## Version 1 (saved 2026-09-21)

| ID | WBS | Task | Duration | Start | Finish |
| --- | --- | --- | --- | --- | --- |
| 2 | 1 | **项目启动与计划管控** | 3d | 2026-09-11 | 2026-09-15 |
| 3 |  | 内部启动分工会议 | 1d | 2026-09-11 | 2026-09-11 |
| 4 |  | 外部启动协调会议 | 1d | 2026-09-14 | 2026-09-14 |
| 5 |  | 项目实施计划输出 | 1d | 2026-09-14 | 2026-09-14 |
| 6 |  | 现场实施环境调研 | 1d | 2026-09-15 | 2026-09-15 |
| 7 | 2 | **环境与基础资源准备** | 1d | 2026-09-15 | 2026-09-15 |
| 8 |  | 云资源及堡垒机申请 | 3d | 2026-09-15 | 2026-09-17 |
| 9 |  | 国产化软件采购申请 | 1d | 2026-09-15 | 2026-09-15 |
| 10 |  | 系统环境基础化配置 | 1d | 2026-09-16 | 2026-09-16 |
| 11 |  | 人大金仓数据库安装 | 1d | 2026-09-17 | 2026-09-17 |
| 12 |  | 部署k8sPaaS云平台 | 3d | 2026-09-17 | 2026-09-21 |
| 13 |  | 云雀融媒体后台部署 | 1d | 2026-09-21 | 2026-09-21 |
| 14 |  | 与东方盛行转码对接 | 3d | 2026-09-22 | 2026-09-24 |
| 15 |  | 组织机构与权限录入 | 1d | 2026-09-24 | 2026-09-24 |
| 16 |  | 稿库与编审流程调研 | 3d | 2026-10-08 | 2026-10-12 |
| 17 |  | 融媒业务流程调研 | 1d | 2026-10-08 | 2026-10-08 |
| 18 |  | 第一阶段：国庆节前攻坚（9月14日-9月30日） | 1d | 2026-09-15 | 2026-09-15 |
| 19 | 4 | **大屏可视化系统实施** | 28d | 2026-09-16 | 2026-10-23 |
| 20 |  | 大屏需求与信源清单确认 | 1d | 2026-09-16 | 2026-09-16 |
| 21 |  | 大屏尺寸确认与模板选型 | 2d | 2026-09-17 | 2026-09-18 |
| 22 |  | 大屏原型设计与最终确认 | 1d | 2026-09-21 | 2026-09-21 |
| 23 |  | 大屏数据接入开发及研判 | 3d | 2026-09-22 | 2026-09-24 |
| 24 |  | 大屏个性化样式进行开发 | 7d | 2026-10-08 | 2026-10-16 |
| 25 |  | 融媒体信源清单信息提供 | 2d | 2026-10-19 | 2026-10-20 |
| 26 |  | 大屏提供初版效果及演示 | 1d | 2026-10-21 | 2026-10-21 |
| 27 |  | 大屏数据校准与内容联调 | 1d | 2026-10-22 | 2026-10-22 |
| 28 |  | 大屏正式版交付 | 1d | 2026-10-23 | 2026-10-23 |
| 29 | 5 | **系统能力提供及接入** | 12d | 2026-10-08 | 2026-10-23 |
| 30 |  | AIGC与智能能力开通 | 3d | 2026-10-09 | 2026-10-13 |
| 31 |  | 智能审校服务配置 | 1d | 2026-10-13 | 2026-10-13 |
| 32 |  | 监测信源信息提供 | 2d | 2026-10-08 | 2026-10-09 |
| 33 |  | 一键转载到云雀系统 | 10d | 2026-10-12 | 2026-10-23 |
| 34 | 6 | **融媒业务贯通及汇聚** | 32d | 2026-09-15 | 2026-10-28 |
| 35 |  | 横向打通省市级媒体方案分析 | 1d | 2026-09-15 | 2026-09-15 |
| 36 |  | 横向打通省市级媒体方案确认 | 9d | 2026-09-18 | 2026-09-30 |
| 37 |  | 纵向贯通区县级媒体方案分析 | 4d | 2026-09-18 | 2026-09-23 |
| 38 |  | 纵向贯通区县级媒体方案确认 | 5d | 2026-09-24 | 2026-09-30 |
| 39 |  | 省市级媒体方案进入开发周期 | 10d | 2026-10-08 | 2026-10-21 |
| 40 |  | 区县级媒体方案进入开发周期 | 10d | 2026-10-08 | 2026-10-21 |
| 41 |  | 融媒稿件汇聚贯通全流程测试 | 5d | 2026-10-22 | 2026-10-28 |
| 42 |  | 第二阶段：国庆节后至记者节（10月8日-11月8日） | 1d | 2026-10-22 | 2026-10-22 |
| 43 | 8 | **纸媒与电子报刊实施** | 17d | 2026-10-29 | 2026-11-20 |
| 44 |  | 采编业务流程调研 | 2d | 2026-10-29 | 2026-10-30 |
| 45 |  | 数字报模板确认 | 1d | 2026-11-09 | 2026-11-09 |
| 46 |  | 报纸模块参数配置 | 2d | 2026-11-09 | 2026-11-10 |
| 47 |  | 稿库编审流程配置 | 3d | 2026-11-11 | 2026-11-13 |
| 48 |  | 排版工具升级部署 | 1d | 2026-11-16 | 2026-11-16 |
| 49 |  | 反解标引工具部署 | 1d | 2026-11-17 | 2026-11-17 |
| 50 |  | DMS工具升级测试 | 1d | 2026-11-17 | 2026-11-17 |
| 51 |  | 新华供稿地址对接 | 1d | 2026-11-18 | 2026-11-18 |
| 52 |  | 纸媒全流程测试 | 1d | 2026-11-19 | 2026-11-19 |
| 53 |  | 数字报模板制作 | 8d | 2026-11-10 | 2026-11-19 |
| 54 |  | 数字报流程测试 | 1d | 2026-11-19 | 2026-11-19 |
| 55 |  | 纸媒模块使用培训 | 1d | 2026-11-19 | 2026-11-19 |
| 56 |  | 纸媒/数字报切换 | 1d | 2026-11-20 | 2026-11-20 |
| 57 | 9 | **报纸历史数据迁移** | 1d | 2026-09-11 | 2026-09-11 |
| 58 |  | 数据迁移方案编制 | 1d | 2026-09-11 | 2026-09-11 |
| 59 |  | 迁移环境与工具准备 | 1d | 2026-09-11 | 2026-09-11 |
| 60 |  | 历史数据迁移执行 | 1d | 2026-09-11 | 2026-09-11 |
| 61 |  | 迁移数据重新发布 | 1d | 2026-09-11 | 2026-09-11 |
| 62 | 10 | **资料整理与项目验收** | 20d | 2026-11-16 | 2026-12-11 |
| 63 |  | 验收资料整理 | 11d | 2026-11-16 | 2026-11-30 |
| 64 |  | 系统管理员培训 | 1d | 2026-11-30 | 2026-11-30 |
| 65 |  | 配合软件测评 | 10d | 2026-11-30 | 2026-12-11 |
| 66 |  | 项目组织验收 | 1d | 2026-12-04 | 2026-12-04 |
| 67 |  | 第三阶段：记者节后至验收（11月9日-12月15日） | 1d | 2026-09-11 | 2026-09-11 |

## Version 2 (saved 2026-09-21)

Last finish stays 2026-12-11.

Added:

| ID | Task | Duration | Start | Finish |
| --- | --- | --- | --- | --- |
| 12 | 高斯海量数据库安装 | 1d | 2026-09-17 | 2026-09-17 |
| 14 | 媒资系统、素材交易后台部署 | 4d | 2026-09-17 | 2026-09-22 |
| 15 | 媒体处理部署、国产化中间件部署 | 2d | 2026-09-21 | 2026-09-22 |
| 32 | **媒资系统智能能力接入** | 13d | 2026-10-08 | 2026-10-26 |
| 33 | 国产化显卡适配 | 12d | 2026-10-08 | 2026-10-23 |
| 34 | 智能能力接入 | 1d | 2026-10-26 | 2026-10-26 |

Changed:

| ID | Task | Finish | Duration |
| --- | --- | --- | --- |
| 7 | **环境与基础资源准备** | 2026-09-15 → 2026-10-12 (+27d) | 1d → 20d |
| 10 | 系统环境基础化配置 | 2026-09-16 → 2026-09-17 (+1d) | 1d → 2d |
